Schedule from MS Project, 2016-10-05 to 2016-12-29, A marks actual dates.

## Calendars

- Standard: Mon-Fri 08:00-12:00, 13:00-17:00; Sat-Sun off.

## Resources

| Resource |
| --- |
| MO Visio |
| Proteus |
| MO Project |
| Equipments And Money |
| Equipments And Money (About 300000 VND For Each Product |
| Equipments And Money (About 300000 VND For Each Product) |
| Equipments And Expenditure (About 300000 VND For Each Product) |
| Necessary Equipments |
| Expenditure |
| Decorations |
| Transports |
| Proteus Software And Order Fee |
| Proteus Software And Bread-Board |
| MO Project Software |
| MO Visio Software |
| Necessary Softwares |
| Equipments And Expenditure |
| Internet |
| MO PowerPoint Software |
| Proshow Producer Software |
| Camera |
| Proshow Producer Software And Transports |
| ádấd |
| ádsad |
| ádđ |
| Hiếu |
| Bách |
| Thông |
| Phước |
| Hoàng |
| All members |

## Schedule

| ID | WBS | Task | Type | Duration | Start | Finish | Predecessors | Complete | Remaining | Actual start | Resources | Work | Actual work | Description | Dependence | Text3 |
| --- | --- | --- | --- | --- | --- | --- | --- | --- | --- | --- | --- | --- | --- | --- | --- | --- |
| 1 | 1 | **The Project For Star-Shaped LED Circuit** |  | 62d | 2016-10-05 A | 2016-12-29 |  | 68% | 19.58d |  |  | 784h | 632h | Make Finished Electronic Product | de |  |
| 2 | 1.1 | **Concept Determination** |  | 1.8w | 2016-10-05 A | 2016-10-17 A |  | 100% |  |  |  | 56h | 56h | Create The Concept Of Product And Make Plan |  | áđa |
| 3 | 1.1.1 | Determine Ideas | manual | 2d | 2016-10-05 A | 2016-10-06 A |  | 100% |  |  | All members | 16h | 16h |  |  |  |
| 4 | 1.1.2 | **Describe Product And Its Application** |  | 6d | 2016-10-07 | 2016-10-14 A | 3 | 100% |  | 2016-10-12 |  | 24h | 24h |  |  |  |
| 5 | 1.1.2.1 | Functional Requirements | manual | 1d | 2016-10-12 A | 2016-10-12 A |  | 100% |  |  | All members | 8h | 8h |  |  |  |
| 6 | 1.1.2.2 | Non-Functional Requirements | manual | 2d | 2016-10-13 A | 2016-10-14 A |  | 100% |  |  | All members | 16h | 16h |  |  |  |
| 7 | 1.1.3 | Make Plan | manual | 2d | 2016-10-15 A | 2016-10-17 A |  | 100% |  |  | Hiếu | 16h | 16h |  | 3,4 |  |
| 8 | 1.2 | **Block Design Performance** |  | 2.2w | 2016-10-18 A | 2016-11-01 A | 2 | 100% |  |  |  | 328h | 328h | Perform A Particular Block Design |  |  |
| 9 | 1.2.1 | Perform Block Design | manual | 1d | 2016-10-18 A | 2016-10-18 A |  | 100% |  |  | Bách | 8h | 8h |  |  |  |
| 10 | 1.2.2 | **Design Each Block** |  | 2w | 2016-10-19 A | 2016-11-01 A |  | 100% |  |  |  | 320h | 320h |  |  |  |
| 11 | 1.2.2.1 | Power Block | manual | 2w | 2016-10-19 A | 2016-11-01 A |  | 100% |  |  | Hiếu; Bách | 160h | 160h |  |  |  |
| 12 | 1.2.2.2 | Display Block | manual | 2w | 2016-10-19 A | 2016-11-01 A |  | 100% |  |  | Hiếu; Hoàng | 160h | 160h |  |  |  |
| 13 | 1.3 | **Best Alternative Selection** |  | 1w | 2016-11-02 A | 2016-11-08 A | 2, 8 | 100% |  |  |  | 40h | 40h | Choose The Best Alternative From All Alternatives |  |  |
| 14 | 1.3.1 | Best Alternative Selection | manual | 1w | 2016-11-02 A | 2016-11-08 A | 2, 8 | 100% |  |  | Hiếu | 40h | 40h | Choose The Best Alternative From All the Alternatives |  |  |
| 15 | 1.4 | **Circuit Simulation** |  | 1.8w | 2016-11-09 A | 2016-11-21 A | 13 | 100% |  |  |  | 72h | 72h | Simulate The Circuit With Proteus Software And Test | 8,13 |  |
| 16 | 1.4.1 | Simulate The Circuit With Proteus Software | manual | 7d | 2016-11-09 A | 2016-11-17 A |  | 100% |  |  | Hiếu | 56h | 56h |  |  |  |
| 17 | 1.4.2 | Test With Bread-Board | manual | 2d | 2016-11-18 A | 2016-11-21 A | 16 | 100% |  |  | All members | 16h | 16h |  |  |  |
| 18 | 1.5 | **Make Printed Circuit Board (PCB)** |  | 2w | 2016-11-22 A | 2016-12-05 A | 15 | 100% |  |  |  | 136h | 136h | Design And Order PCB | 15 |  |
| 19 | 1.5.1 | Design PCB With Proteus Software | manual | 3d | 2016-11-22 A | 2016-11-24 A |  | 100% |  |  | Hiếu | 24h | 24h |  |  |  |
| 20 | 1.5.2 | Order PCB | manual | 7d | 2016-11-25 A | 2016-12-05 A | 19 | 100% |  |  | Thông; Phước | 112h | 112h |  |  |  |
| 21 | 1.6 | **Product Manufacture And Duration of Risk** |  | 3.6w | 2016-12-06 | 2016-12-29 | 18 |  |  |  |  | 112h |  | Manufacture And Check Product | 18 |  |
| 22 | 1.6.1 | Buy Components | manual | 1d | 2016-12-06 | 2016-12-06 |  |  |  |  | Bách | 8h |  |  | 18 |  |
| 23 | 1.6.2 | Weld and Assemble Components Onto The Circuit | manual | 2w | 2016-12-07 | 2016-12-20 | 22 |  |  |  | All members | 80h |  |  | 18,21 |  |
| 24 | 1.6.3 | Decorate The Product | manual | 1d | 2016-12-21 | 2016-12-21 | 23 |  |  |  | Phước | 8h |  |  | 22 |  |
| 25 | 1.6.4 | Complete The Product | manual | 1d | 2016-12-22 | 2016-12-22 | 24 |  |  |  | All members | 8h |  |  | 22,23 |  |
| 26 | 1.6.5 | Final Check | manual | 1d | 2016-12-23 | 2016-12-23 | 25 |  |  |  | All members | 8h |  |  | 24 |  |
| 27 | 1.6.6 | Duaration of Risk | manual | 1w | 2016-12-24 | 2016-12-29 |  |  |  |  |  |  |  |  |  |  |

Notes:
- 1: Deliverable: Finished Product, Complete .ppt File And Product Introduction Video
- 2: Deliverable: A Plan For Product (.mpp File) And Its Specification ( .ppt File)
- 3: Deliverable: Ideas Of Product (.ppt File)
- 4: Deliverable: Product's Specification (.ppt File)
- 7: Deliverable: The Plan (.mpp File)
- 8: Deliverable: A Particular Block Design (.vdsx File)
- 13: Deliverable: The Best Alternative
- 14: Deliverable: The Best Alternative
- 15: Deliverable: The Proteus Circuit Simulation (.pdsprj File)
- 18: Deliverable: PCB
- 19: Deliverable: The Proteus PCB Simulation
- 21: Deliverable: Finished Product And Complete .ppt File

| ID | WBS | Task | Type | Duration | Start | Finish | Predecessors | Resources | Work | Description | Dependence |
| --- | --- | --- | --- | --- | --- | --- | --- | --- | --- | --- | --- |
| 28 | 1.7 | **Product Preservation And Delivery** |  | 1w | 2016-10-05 | 2016-10-11 | 21 |  | 40h | Package And Deliver Products To Customers | 20 |
| 29 | 1.7.1 | Product Preservation And Delivery | manual | 1w | 2016-10-05 | 2016-10-11 |  | All members | 40h | Package And Deliver Products To Customers |  |

Notes:
- 28: Deliverable: Product Introduction Video, Packaged And Delivered Products To Customers
- 29: Deliverable: Product Introduction Video, Packaged And Delivered Products To Customers
